# TaskPlan - ISO Datatype - Option C

Schedule from MS Project, 2010-03-01 to 2010-04-29.
NIH/NCI

## Calendars

- Standard: Mon-Fri 08:00-12:00, 13:00-17:00; Sat-Sun off.

## Resources

| Resource |
| --- |
| SDK |
| caGrid |
| caAdapter |
| QA |

## Schedule

| ID | WBS | Task | Type | Duration | Start | Finish | Predecessors | Total slack | Free slack | Constraint | Resources | Work |
| --- | --- | --- | --- | --- | --- | --- | --- | --- | --- | --- | --- | --- |
| 1 | 1 | **ISO Datatype support** |  | 44d | 2010-03-01 | 2010-04-29 |  | 0d |  |  |  | 3064h |
| 2 | 1.1 | Kickoff |  | 1d | 2010-03-01 | 2010-03-01 |  | 0d |  | start no earlier than 2010-03-01 |  |  |
| 3 | 1.2 | **Implementation** |  | 33d | 2010-03-02 | 2010-04-15 |  | 0d |  |  |  | 1864h |
| 4 | 1.2.1 | **ISO 21090 Library** |  | 18d | 2010-03-02 | 2010-03-25 |  | 0d |  |  |  | 384h |
| 5 | 1.2.1.1 | Analyze COPPA Localized library |  | 3d | 2010-03-02 | 2010-03-04 | 2 | 0d |  |  | SDK; caGrid | 48h |
| 6 | 1.2.1.2 | Analyze COPPA serialization framework |  | 3d | 2010-03-02 | 2010-03-04 | 2 | 30d |  |  | SDK; caGrid | 48h |
| 7 | 1.2.1.3 | Analyze COPPA OR Mapping framework |  | 3d | 2010-03-02 | 2010-03-04 | 2 | 30d |  |  | SDK; caGrid | 48h |
| 8 | 1.2.1.4 | Implement enhancements in datatype library |  | 15d | 2010-03-05 | 2010-03-25 | 7 | 15d | 0d |  | SDK; caGrid | 240h |
| 9 | 1.2.1.5 | Baseline library code | milestone | 0d | 2010-03-25 | 2010-03-25 | 8 | 15d |  |  |  |  |
| 10 | 1.2.2 | **SDK Enhancements** |  | 25d | 2010-03-05 | 2010-04-08 |  | 0d |  |  |  | 880h |
| 11 | 1.2.2.1 | Enhance SDK Java code generator for the ISO data types |  | 5d | 2010-03-05 | 2010-03-11 | 5 | 25d |  |  | SDK | 40h |
| 12 | 1.2.2.2 | Enhance SDK ORM module for ISO data types |  | 20d | 2010-03-05 | 2010-04-01 | 5 | 10d |  |  | SDK | 160h |
| 13 | 1.2.2.3 | Enhance SDK query translator for ISO data types |  | 20d | 2010-03-05 | 2010-04-01 | 5 | 10d |  |  | SDK | 160h |
| 14 | 1.2.2.4 | Enhance SDK service layer to support ISO data types |  | 20d | 2010-03-05 | 2010-04-01 | 5 | 10d |  |  | SDK | 160h |
| 15 | 1.2.2.5 | Enhance SDK proxy framework for ISO data types |  | 20d | 2010-03-05 | 2010-04-01 | 5 | 10d |  |  | SDK | 160h |
| 16 | 1.2.2.6 | Enhance BDA scripts for packaging and deployment |  | 20d | 2010-03-05 | 2010-04-01 | 5 | 0d |  |  | SDK | 160h |
| 17 | 1.2.2.7 | Unit test and defect fix |  | 5d | 2010-04-02 | 2010-04-08 | 16 | 0d |  |  | SDK | 40h |
| 18 | 1.2.2.8 | Deliver baseline SDK | milestone | 0d | 2010-04-08 | 2010-04-08 | 17 | 5d |  |  |  |  |
| 19 | 1.2.3 | **caAdapter Enhancements** |  | 25d | 2010-03-05 | 2010-04-08 |  | 15d |  |  |  | 160h |
| 20 | 1.2.3.1 | Enhance caAdapter to load ISO 21090 information |  | 5d | 2010-03-05 | 2010-03-11 | 5 | 5d | 0d |  |  |  |
| 21 | 1.2.3.2 | Enhance caAdapter Model Mapping Service |  | 15d | 2010-03-12 | 2010-04-01 | 20 | 5d | 0d |  | caAdapter | 120h |
| 22 | 1.2.3.3 | Unit test and defect fix |  | 5d | 2010-04-02 | 2010-04-08 | 21 | 5d | 0d |  | caAdapter | 40h |
| 23 | 1.2.3.4 | Deliver baseline caAdapter | milestone | 0d | 2010-04-08 | 2010-04-08 | 22 | 5d |  |  |  |  |
| 24 | 1.2.4 | **caGrid Enhancements** |  | 25d | 2010-03-05 | 2010-04-08 |  | 0d |  |  |  | 360h |
| 25 | 1.2.4.1 | Create Introduce extensions to support ISO 21090 datatypes |  | 20d | 2010-03-05 | 2010-04-01 | 5 | 0d |  |  | caGrid | 160h |
| 26 | 1.2.4.2 | Develop Reference implementation for SDK like system |  | 20d | 2010-03-05 | 2010-04-01 | 5 | 10d |  |  | caGrid | 160h |
| 27 | 1.2.4.3 | Unit test and defect fix |  | 5d | 2010-04-02 | 2010-04-08 | 25 | 0d |  |  | caGrid | 40h |
| 28 | 1.2.4.4 | Deliver baseline caGrid components | milestone | 0d | 2010-04-08 | 2010-04-08 | 27 | 0d |  |  |  |  |

| ID | WBS | Task | Type | Duration | Start | Finish | Predecessors | Total slack | Resources | Work |
| --- | --- | --- | --- | --- | --- | --- | --- | --- | --- | --- |
| 29 | 1.2.5 | **SDK/caGrid Integration** |  | 5d | 2010-04-09 | 2010-04-15 |  | 0d |  | 80h |
| 30 | 1.2.5.1 | Integration testing and defect fixing |  | 5d | 2010-04-09 | 2010-04-15 | 17, 28 | 0d | SDK; caGrid | 80h |
| 31 | 1.2.5.2 | Deliver SDK and caGrid alpha version | milestone | 0d | 2010-04-15 | 2010-04-15 | 30 | 0d |  |  |
| 32 | 1.3 | **QA Testing** |  | 25d | 2010-03-26 | 2010-04-29 |  | 0d |  | 480h |
| 33 | 1.3.1 | Prepare test plan |  | 10d | 2010-03-26 | 2010-04-08 | 9 | 15d | QA; SDK; caGrid | 240h |
| 34 | 1.3.2 | Execute test cases |  | 10d | 2010-04-16 | 2010-04-29 | 31 | 0d | QA | 80h |
| 35 | 1.3.3 | Provide test support |  | 10d | 2010-04-16 | 2010-04-29 | 31 | 0d | SDK; caGrid | 160h |
| 36 | 1.3.4 | Deliver SDK, caGrid, caAdapter | milestone | 0d | 2010-04-29 | 2010-04-29 | 35 | 0d |  |  |
| 37 | 1.4 | **User Documentation** |  | 10d | 2010-04-16 | 2010-04-29 |  | 0d |  | 720h |
| 38 | 1.4.1 | Prepare developers guide for service developers with ISO 21090 datatypes |  | 10d | 2010-04-16 | 2010-04-29 | 31 | 0d | SDK; caGrid; caAdapter | 240h |
| 39 | 1.4.2 | Prepare user guide |  | 10d | 2010-04-16 | 2010-04-29 | 31 | 0d | SDK; caGrid; caAdapter | 240h |
| 40 | 1.4.3 | Prepare installation guide |  | 10d | 2010-04-16 | 2010-04-29 | 31 | 0d | SDK; caGrid; caAdapter | 240h |
| 41 | 1.4.4 | Deliver installation and user guide | milestone | 0d | 2010-04-29 | 2010-04-29 | 39, 40 | 0d |  |  |
